# caarray_schedule_2_1_1

Schedule from MS Project, 2008-08-01 to 2008-10-22.
Sony Electronics, Inc.

## Calendars

- Standard: Mon-Fri 08:00-12:00, 13:00-17:00; Sat-Sun off.

## Resources

| Resource |
| --- |
| mduncan |
| rsrinivasa |
| dkokotov |
| slustbader |
| mshestopalov |
| jgill |
| bpickeral |
| reedya |
| keener |
| misquitta |
| kc |
| DBA |
| Systems |

## Schedule

| ID | WBS | Task | Type | Duration | Start | Finish | Predecessors | Total slack | Free slack | Constraint | Resources | Work |
| --- | --- | --- | --- | --- | --- | --- | --- | --- | --- | --- | --- | --- |
| 1 | 1 | **Construction RC** |  | 29d? | 2008-08-01 | 2008-09-10 |  | 0d |  |  |  | 1160h |
| 2 | 1.1 | Project Management |  | 1d? | 2008-08-01 | 2008-08-01 |  | 54d |  |  | mduncan | 8h |
| 3 | 1.2 | Requirements Management |  | 1d? | 2008-08-01 | 2008-08-01 |  | 54d |  |  | rsrinivasa | 8h |
| 4 | 1.3 | **Implementation** |  | 20d? | 2008-08-01 | 2008-08-28 |  | 0d |  |  |  | 800h |
| 5 | 1.3.1 | Develop RC release |  | 19d? | 2008-08-01 | 2008-08-27 |  | 0d |  | finish no earlier than 2008-08-27 | dkokotov; slustbader; mshestopalov; jgill; bpickeral | 760h |
| 6 | 1.3.2 | Verify Defects on DEV |  | 1d | 2008-08-28 | 2008-08-28 | 5 | 0d |  |  | dkokotov; slustbader; mshestopalov; jgill; bpickeral | 40h |
| 7 | 1.3.3 | Milestone: Deploy RC to QA | milestone | 0d | 2008-08-28 | 2008-08-28 | 6 | 0d |  |  |  |  |
| 8 | 1.4 | **Test** |  | 9d | 2008-08-29 | 2008-09-10 |  | 26d |  |  |  | 344h |
| 9 | 1.4.1 | Verify Defects on QA |  | 4d | 2008-08-29 | 2008-09-03 | 7 | 26d | 0d |  | reedya; keener; misquitta | 96h |
| 10 | 1.4.2 | Regression Test |  | 5d | 2008-08-29 | 2008-09-04 | 7 | 26d | 0d |  | reedya; keener; misquitta | 120h |
| 11 | 1.4.3 | Deploy to Stage |  | 1d | 2008-09-04 | 2008-09-04 | 9 | 26d | 0d |  |  |  |
| 12 | 1.4.4 | Stage Test |  | 4d | 2008-09-05 | 2008-09-10 | 11 | 26d | 0d |  | reedya; keener; misquitta | 96h |
| 13 | 1.4.5 | Installer Testing |  | 4d | 2008-09-05 | 2008-09-10 | 9, 10 | 26d | 0d |  | keener | 32h |
| 14 | 1.4.6 | Security Scan |  | 4d | 2008-09-05 | 2008-09-10 | 9, 10 | 26d | 0d |  |  |  |
| 15 | 1.4.7 | Milestone: RC testing completed | milestone | 0d | 2008-09-10 | 2008-09-10 | 12, 13, 14 | 26d |  |  |  |  |
| 16 | 2 | **Construction RC2** |  | 40d? | 2008-08-01 | 2008-09-25 |  | 19d |  |  |  | 748h |
| 17 | 2.1 | Project Management |  | 1d? | 2008-08-01 | 2008-08-01 |  | 58d |  |  |  |  |
| 18 | 2.2 | **Implementation** |  | 9.5d | 2008-08-29 | 2008-09-11 |  | 0d |  |  |  | 380h |
| 19 | 2.2.1 | Address RC bugs |  | 9d | 2008-08-29 | 2008-09-10 | 4 | 0d |  |  | dkokotov; slustbader; mshestopalov; jgill; bpickeral | 360h |
| 20 | 2.2.2 | Verify Defects on DEV |  | 0.5d | 2008-09-11 | 2008-09-11 | 19 | 12.5d | 0d |  | dkokotov; slustbader; mshestopalov; jgill; bpickeral | 20h |
| 21 | 2.2.3 | Milestone: Deploy RC2 to QA | milestone | 0d | 2008-09-11 | 2008-09-11 | 20 | 12.5d | 0d |  |  |  |
| 22 | 2.3 | **Test** |  | 10.5d | 2008-09-11 | 2008-09-25 |  | 12.5d |  |  |  | 368h |
| 23 | 2.3.1 | Verify Defects on QA |  | 4d | 2008-09-11 | 2008-09-17 | 21 | 13.5d | 0d |  | reedya; keener; misquitta | 96h |
| 24 | 2.3.2 | Regression Test |  | 5d | 2008-09-11 | 2008-09-18 | 21 | 12.5d | 0d |  | reedya; keener; misquitta | 120h |
| 25 | 2.3.3 | Deploy to Stage |  | 1d | 2008-09-17 | 2008-09-18 | 23 | 20.5d | 0d |  |  |  |
| 26 | 2.3.4 | Stage Test |  | 4d | 2008-09-18 | 2008-09-24 | 25 | 20.5d | 1.5d |  | reedya; keener; misquitta | 96h |
| 27 | 2.3.5 | Installer Testing |  | 3d | 2008-09-18 | 2008-09-23 | 23, 24 | 13.5d | 1d |  | keener | 24h |
| 28 | 2.3.6 | Installer Testing - kc |  | 4d | 2008-09-18 | 2008-09-24 | 23, 24 | 12.5d | 0d |  | kc | 32h |
| 29 | 2.3.7 | Security Scan |  | 4d | 2008-09-18 | 2008-09-24 | 25 | 20.5d |  |  |  |  |
| 30 | 2.3.8 | Deployment Test |  | 2d | 2008-09-18 | 2008-09-22 | 23, 24 | 22.5d | 3.5d |  |  |  |
| 31 | 2.3.9 | Milestone: RC2 testing completed | milestone | 0d | 2008-09-25 | 2008-09-25 | 26, 27, 30, 34 | 19d |  |  |  |  |

| ID | WBS | Task | Type | Duration | Start | Finish | Predecessors | Total slack | Free slack | Constraint | Resources | Work |
| --- | --- | --- | --- | --- | --- | --- | --- | --- | --- | --- | --- | --- |
| 32 | 3 | **Construction RC3** |  | 17d | 2008-09-11 | 2008-10-03 |  | 0d |  |  |  | 272h |
| 33 | 3.1 | Address RC2 bugs |  | 10d | 2008-09-11 | 2008-09-24 | 19 | 0d |  |  |  |  |
| 34 | 3.2 | **Implementation** |  | 11d | 2008-09-11 | 2008-09-25 |  | 0d |  |  |  |  |
| 35 | 3.2.1 | Verify Defects on DEV |  | 1d | 2008-09-25 | 2008-09-25 | 33 | 0d |  |  |  |  |
| 36 | 3.2.2 | Milestone: Deploy RC3 to QA | milestone | 0d | 2008-09-25 | 2008-09-25 | 35 | 0d |  |  |  |  |
| 37 | 3.3 | **Test** |  | 6d | 2008-09-26 | 2008-10-03 |  | 0d |  |  |  | 272h |
| 38 | 3.3.1 | Verify Defects on QA |  | 2d | 2008-09-26 | 2008-09-29 | 36 | 0d |  |  | reedya; keener; misquitta | 48h |
| 39 | 3.3.2 | Regression Test |  | 3d | 2008-09-26 | 2008-09-30 | 35 | 0d |  |  | reedya; keener; misquitta | 72h |
| 40 | 3.3.3 | Deploy to Stage |  | 0.5d | 2008-09-30 | 2008-09-30 | 38 | 0.5d | 0d |  |  |  |
| 41 | 3.3.4 | Stage Test |  | 3d | 2008-09-30 | 2008-10-03 | 40 | 0.5d |  |  | reedya; keener; misquitta | 72h |
| 42 | 3.3.5 | Installer Testing |  | 3d | 2008-10-01 | 2008-10-03 | 38, 39 | 0d |  |  | keener | 24h |
| 43 | 3.3.6 | Installer Testing - kc |  | 3d | 2008-10-01 | 2008-10-03 | 38, 39 | 0d |  |  | kc | 24h |
| 44 | 3.3.7 | LSD compliance testing |  | 3d | 2008-10-01 | 2008-10-03 | 38, 39 | 0d |  |  |  |  |
| 45 | 3.3.8 | Security scan |  | 4d | 2008-09-30 | 2008-10-03 | 38 | 0d |  |  |  |  |
| 46 | 3.3.9 | Deployment Testing |  | 2d | 2008-10-01 | 2008-10-02 | 39 | 1d |  |  | DBA; Systems | 32h |
| 47 | 3.3.10 | Milestone: RC3 testing completed | milestone | 0d | 2008-10-03 | 2008-10-03 | 46, 45, 44, 41, 42, 43 | 0d |  |  |  |  |
| 48 | 4 | **Construction RC4 - GA** |  | 55d? | 2008-08-01 | 2008-10-16 |  | 4d |  |  |  | 240h |
| 49 | 4.1 | Project Management |  | 1d? | 2008-08-01 | 2008-08-01 |  | 58d |  |  |  |  |
| 50 | 4.2 | **Implementation** |  | 2.5d | 2008-10-06 | 2008-10-08 |  | 0d |  |  |  |  |
| 51 | 4.2.1 | Address bugs |  | 2d | 2008-10-06 | 2008-10-07 | 47 | 0d |  |  |  |  |
| 52 | 4.2.2 | Verify Defects on DEV |  | 0.5d | 2008-10-08 | 2008-10-08 | 51 | 0d |  |  |  |  |
| 53 | 4.2.3 | Milestone: Deploy GA to QA | milestone | 0d | 2008-10-08 | 2008-10-08 | 52 | 0d |  |  |  |  |
| 54 | 4.3 | **Test** |  | 6.5d | 2008-10-08 | 2008-10-16 |  | 0d |  |  |  | 240h |
| 55 | 4.3.1 | Verify Defects on QA |  | 2d | 2008-10-08 | 2008-10-10 | 53 | 0d |  | start no earlier than 2008-09-26 | reedya; keener; misquitta | 48h |
| 56 | 4.3.2 | Regression Test |  | 3d | 2008-10-08 | 2008-10-13 | 53 | 1.5d | 0d | start no earlier than 2008-09-26 | reedya; keener; misquitta | 72h |
| 57 | 4.3.3 | Deploy to Stage |  | 0.5d | 2008-10-10 | 2008-10-10 | 55 | 0d |  | start no earlier than 2008-09-30 |  |  |
| 58 | 4.3.4 | Stage Test |  | 3d | 2008-10-13 | 2008-10-15 | 57 | 1d | 0d | start no earlier than 2008-09-30 | reedya; keener; misquitta | 72h |
| 59 | 4.3.5 | Installer Testing |  | 3d | 2008-10-10 | 2008-10-15 | 55 | 1.5d |  | start no earlier than 2008-10-01 | keener | 24h |
| 60 | 4.3.6 | Installer Testing - kc |  | 3d | 2008-10-10 | 2008-10-15 | 55 | 1.5d |  | start no earlier than 2008-10-01 | kc | 24h |
| 61 | 4.3.7 | LSD compliance testing |  | 3d | 2008-10-10 | 2008-10-15 | 55 | 1.5d | 0d | start no earlier than 2008-10-01 |  |  |
| 62 | 4.3.8 | Security scan |  | 4d | 2008-10-13 | 2008-10-16 | 57 | 0d |  | start no earlier than 2008-09-30 |  |  |
| 63 | 4.3.9 | Deployment Testing |  | 2d | 2008-10-13 | 2008-10-15 | 56, 57 | 1.5d |  |  |  |  |
| 64 | 4.3.10 | Update User Guide |  | 20d | 2008-08-29 | 2008-09-25 |  | 19d |  |  |  |  |

| ID | WBS | Task | Type | Duration | Start | Finish | Predecessors | Total slack | Free slack | Constraint |
| --- | --- | --- | --- | --- | --- | --- | --- | --- | --- | --- |
| 65 | 4.3.11 | **Milestone: GA testing completed** |  | 0d | 2008-10-16 | 2008-10-16 | 58, 59, 60, 61, 63, 62 | 0d |  | start no earlier than 2008-10-03 |
| 66 | 4.3.11.1 | GUI change summary to Jill |  | 7d | 2008-08-29 | 2008-09-08 | 7 | 15d | 0d |  |
| 67 | 5 | **Configuration and Change Management** |  | 35d | 2008-08-29 | 2008-10-16 |  | 4d |  |  |
| 68 | 5.1 | Update User Guide |  | 5d | 2008-09-09 | 2008-09-15 | 66 | 15d | 0d |  |
| 69 | 5.2 | **Documentation** |  | 32d | 2008-08-29 | 2008-10-13 |  | 7d |  |  |
| 70 | 5.2.1 | **Review User Guide** |  | 5d | 2008-09-16 | 2008-09-22 | 68 | 15d | 0d |  |
| 71 | 5.2.1.1 | Incorporate feedback to User Guide |  | 3d | 2008-09-23 | 2008-09-25 | 70 | 15d |  |  |
| 72 | 5.2.1.2 | Send installer guide update to Jill: RC2 |  | 4d | 2008-09-24 | 2008-09-30 | 27, 28 | 8.5d | 0d |  |
| 73 | 5.2.1.3 | Update installer guide: RC2 |  | 4d | 2008-09-30 | 2008-10-06 | 72 | 8.5d |  |  |
| 74 | 5.2.1.4 | Send installer guide update to Jill: RC3 |  | 2d | 2008-10-06 | 2008-10-07 | 42, 43 | 3d | 0d |  |
| 75 | 5.2.2 | **Update Installer Guide** |  | 13.5d | 2008-09-24 | 2008-10-13 |  | 7d |  |  |
| 76 | 5.2.2.1 | Update installer guide: RC3 |  | 2d | 2008-10-08 | 2008-10-09 | 74 | 3d | 0d |  |
| 77 | 5.2.2.2 | Review update to installer guide |  | 2d | 2008-10-10 | 2008-10-13 | 76 | 3d |  |  |
| 78 | 5.2.3 | Prepare 2.1.1 Release Note |  | 2d | 2008-10-13 | 2008-10-15 | 55, 56 | 5.5d |  |  |
| 79 | 5.2.4 | Prepare 2.1.1 client.jar |  | 1d | 2008-10-16 | 2008-10-16 | 58 | 4d |  |  |
| 80 | 5.3 | **Release Artifacts** |  | 4.5d | 2008-10-10 | 2008-10-16 |  | 4d |  |  |
| 81 | 5.3.1 | Prepare 2.1.1 javadoc |  | 1d | 2008-10-16 | 2008-10-16 | 58 | 4d |  |  |
| 82 | 5.3.2 | Prepare 2.1.1 source.zip |  | 1d | 2008-10-16 | 2008-10-16 | 58 | 4d |  |  |
| 83 | 5.3.3 | Update Download Center |  | 4d | 2008-10-10 | 2008-10-16 | 55 | 4.5d |  |  |
| 84 | 5.3.4 | Update Tools Page |  | 2d | 2008-10-13 | 2008-10-14 | 57 | 6d |  |  |
| 85 | 5.3.5 | Update LSD Files Tab |  | 1d | 2008-10-15 | 2008-10-16 | 61 | 4.5d |  |  |
| 86 | 5.3.6 | Update Landing Site |  | 2d | 2008-10-13 | 2008-10-14 | 57 | 6d |  |  |
| 87 | 5.4 | Deploy to PROD |  | 1d | 2008-10-17 | 2008-10-17 | 65 | 0d |  |  |
| 88 | 6 | **Environment** |  | 4d | 2008-10-17 | 2008-10-22 |  | 0d |  |  |
| 89 | 6.1 | Verify PROD Deployment |  | 3d | 2008-10-20 | 2008-10-22 | 87 | 0d |  |  |
| 90 | 6.2 | Milestone: 2.1.1 Release Completed | milestone | 0d | 2008-10-22 | 2008-10-22 | 89 | 0d |  |  |
