# inception_iteration

Schedule from MS Project, 2007-04-02 to 2007-05-18, A marks actual dates.
Rational Software Corporation

## Calendars

- Standard: Mon-Fri 08:00-12:00, 13:00-17:00; Sat-Sun off.

## Resources

| Resource |
| --- |
| etavela |
| smatyas |
| bgendleman |
| rdaly |
| jpike |
| rsrinavasa |
| bg |
| smiller |

## Schedule

| ID | WBS | Task | Type | Duration | Start | Finish | Predecessors | Complete | Remaining | Total slack | Free slack | Constraint | Resources | Work |
| --- | --- | --- | --- | --- | --- | --- | --- | --- | --- | --- | --- | --- | --- | --- |
| 1 | 1 | **caArray 2.0** |  | 34.25d? | 2007-04-02 A | 2007-05-18 |  | 1% | 33.81d? | 0d |  |  |  | 1575.2h |
| 2 | 1.1 | **Inception Phase** |  | 31.25d? | 2007-04-02 A | 2007-05-15 |  | 1% | 30.83d? | 3d |  |  |  | 1555.2h |
| 3 | 1.1.1 | **Inception Iteration 1** |  | 31.25d? | 2007-04-02 A | 2007-05-15 |  | 1% | 30.83d? | 3d |  |  |  | 1555.2h |
| 4 | 1 | **Project Management** |  | 31.25d? | 2007-04-02 | 2007-05-15 |  |  |  | 0d |  |  |  | 720h |
| 5 | 1.1 | Plan the project |  | 30d | 2007-04-02 | 2007-05-11 |  |  |  | 1.25d |  | start no earlier than 2007-04-02 | rdaly; etavela; bgendleman | 720h |
| 6 | 1.4 | Plan Remainder of Initial Iteration |  | 1d | 2007-04-04 | 2007-04-04 |  |  |  | 28.25d | 0d | finish no earlier than 2007-04-04 |  |  |
| 7 | 1.8 | Plan for Next Iteration |  | 5d | 2007-05-07 | 2007-05-11 | 13FF |  |  | 1.25d |  |  |  |  |
| 8 | 1.1.1.1.4 | Manage Risk List |  | 1d? | 2007-04-02 | 2007-04-02 |  |  |  | 30.25d |  |  |  |  |
| 9 | 1.1.1.1.5 | **Finalize Deliverables** |  | 31.25d? | 2007-04-02 | 2007-05-15 |  |  |  | 0d |  |  |  |  |
| 10 | 1.1.1.1.5.1 | March Status Report |  | 2h | 2007-04-16 | 2007-04-16 |  |  |  | 21d |  | start no earlier than 2007-04-16 |  |  |
| 11 | 1.1.1.1.5.2 | April Status Report |  | 2h | 2007-05-15 | 2007-05-15 |  |  |  | 0d |  | start no earlier than 2007-05-15 |  |  |
| 12 | 1.1.1.1.5.3 | Release Risk List |  | 1d? | 2007-04-02 | 2007-04-02 |  |  |  | 30.25d |  |  |  |  |
| 13 | 1.9 | Release Software Development Plan |  | 1d | 2007-05-11 | 2007-05-11 |  |  |  | 1.25d | 0d | start no earlier than 2007-05-11 |  |  |
| 14 | 3 | **Requirements** |  | 20.5d? | 2007-04-02 A | 2007-04-30 |  | 7% | 18.97d? | 13.75d |  |  |  | 84h |
| 15 | 3.1 | Define the Preliminary Vision |  | 5d | 2007-04-23 | 2007-04-30 | 5SS, 16FF |  |  | 13.75d |  | start no earlier than 1999-05-04 |  |  |
| 16 | 3.2 | **Elicit Stakeholder Needs** |  | 18.5d? | 2007-04-04 | 2007-04-30 | 5SS |  |  | 13.75d | 0d |  |  | 68h |
| 17 | 1.1.1.2.2.1 | Live Meeting with NCICB Stakeholders |  | 3d? | 2007-04-04 | 2007-04-06 |  |  |  | 29.25d |  | finish no earlier than 2007-04-06 | bgendleman; rdaly; etavela [25%] | 54h |
| 18 | 1.1.1.2.2.2 | Teleconference with Northwestern |  | 2h | 2007-04-20 | 2007-04-20 |  |  |  | 20d |  | start no earlier than 2007-04-20 | bgendleman | 2h |
| 19 | 1.1.1.2.2.3 | Live Meeting with Georgetown |  | 4h | 2007-04-23 | 2007-04-23 |  |  |  | 18.75d |  | start no earlier than 2007-04-23 | bgendleman | 4h |
| 20 | 1.1.1.2.2.4 | Live Meeting with Thomas Jefferson |  | 4h | 2007-04-26 | 2007-04-26 |  |  |  | 15.75d |  | start no earlier than 2007-04-26 | bgendleman | 4h |
| 21 | 1.1.1.2.2.5 | Live Meeting with U Pitt |  | 4h | 2007-04-30 | 2007-04-30 |  |  |  | 13.75d |  | start no earlier than 2007-04-30 | bgendleman | 4h |
| 22 | 3.3 | Identify and Describe Use Cases |  | 3d | 2007-04-06 | 2007-04-10 |  |  |  | 27.25d | 5d | start no earlier than 2007-04-06 |  |  |
| 23 | 3.5 | Refine the System Definition | milestone | 0d | 2007-04-18 | 2007-04-18 | 6, 22 |  |  | 22.25d |  | start no earlier than 2007-04-18 |  |  |
| 24 | 1.1.1.2.5 | **Implement Requirement and Test Traceability** |  | 1d? | 2007-04-02 | 2007-04-02 |  |  |  | 33.25d |  |  |  |  |
| 25 | 1.1.1.2.5.1 | Determine Approach |  | 1d? | 2007-04-02 | 2007-04-02 |  |  |  | 33.25d |  |  |  |  |
| 26 | 3.6 | Manage Changing Requirements |  | 2d | 2007-04-25 A | 2007-04-26 A | 15SS | 100% |  |  |  | start no earlier than 2007-04-25 |  |  |

| ID | WBS | Task | Duration | Start | Finish | Predecessors | Total slack | Free slack | Resources | Work |
| --- | --- | --- | --- | --- | --- | --- | --- | --- | --- | --- |
| 27 | 1.1.1.2.7 | **Finalize Deliverables** | 5d? | 2007-04-02 | 2007-04-06 |  | 26.25d |  |  | 16h |
| 28 | 1.1.1.2.7.1 | Requirements Management Plan | 1d? | 2007-04-02 | 2007-04-02 |  | 30.25d |  |  |  |
| 29 | 1.1.1.2.7.2 | Finalize Questionnaire | 2d | 2007-04-02 | 2007-04-03 |  | 29.25d |  | bgendleman | 16h |
| 30 | 1.1.1.2.7.3 | Finalize Vision Document | 1d? | 2007-04-02 | 2007-04-02 |  | 30.25d |  |  |  |
| 31 | 1.1.1.2.7.4 | Finalize Supplementary Spec | 1d? | 2007-04-02 | 2007-04-02 |  | 30.25d |  |  |  |
| 32 | 1.1.1.2.7.5 | Detail Prioritized Use Cases | 5d | 2007-04-02 | 2007-04-06 |  | 26.25d |  |  |  |
| 33 | 1.1.1.2.7.6 | Finalize Use Case Model | 1d? | 2007-04-02 | 2007-04-02 |  | 30.25d |  |  |  |
| 34 | 4 | **Analysis and Design** | 5d | 2007-04-02 | 2007-04-06 |  | 29.25d |  |  | 96h |
| 35 | 4.1 | Use Case Analysis (Manage Protocols) | 1d | 2007-04-05 | 2007-04-05 | 6 | 30.25d |  | etavela | 8h |
| 36 | 1.1.1.3.2 | Use Case Design (Manage Protocols) | 1d | 2007-04-02 | 2007-04-02 |  | 33.25d |  | etavela | 8h |
| 37 | 1.1.1.3.3 | Vocabulary Management Subsystem Design | 3d | 2007-04-02 | 2007-04-04 |  | 31.25d |  | etavela [25%]; jpike | 30h |
| 38 | 1.1.1.3.4 | Data Access Subsystem Design | 2d | 2007-04-02 | 2007-04-03 |  | 32.25d |  | rsrinavasa; etavela [25%] | 20h |
| 39 | 1.1.1.3.5 | MAGE-OM Façade | 3d | 2007-04-02 | 2007-04-04 |  | 31.25d |  | rsrinavasa; etavela [25%] | 30h |
| 40 | 1.1.1.3.6 | **Finalize Deliverables** | 5d | 2007-04-02 | 2007-04-06 |  | 29.25d |  |  |  |
| 41 | 1.1.1.3.6.1 | Release Candidate Software Architecture Document | 5d | 2007-04-02 | 2007-04-06 |  | 29.25d |  |  |  |
| 42 | 1.1.1.4 | **Implementation** | 25d? | 2007-04-02 | 2007-05-04 |  | 9.25d |  |  | 418h |
| 43 | 1.1.1.4.1 | Structure the Implementation Model | 1d | 2007-04-02 | 2007-04-02 |  | 9.25d | 0d | etavela | 8h |
| 44 | 1.1.1.4.2 | Implement Vocabulary Subsystem | 3w | 2007-04-03 | 2007-04-23 | 43 | 18.25d |  | jpike; etavela [5%] | 126h |
| 45 | 1.1.1.4.3 | Implement MAGE-OM | 2w | 2007-04-03 | 2007-04-16 | 43 | 9.25d | 0d | etavela [15%]; rsrinavasa | 92h |
| 46 | 1.1.1.4.4 | Implement Data Access | 3d | 2007-04-17 | 2007-04-19 | 45 | 9.25d | 0d | rsrinavasa; etavela [5%] | 25.2h |
| 47 | 1.1.1.4.5 | Implement MAGE-OM Façade | 1w | 2007-04-20 | 2007-04-26 | 46 | 9.25d | 0d | etavela [50%]; rsrinavasa | 60h |
| 48 | 1.1.1.4.6 | Implement Protocol Management | 3d | 2007-04-27 | 2007-05-01 | 47 | 9.25d | 0d | jpike; rsrinavasa; etavela [20%] | 52.8h |
| 49 | 1.1.1.4.7 | Implement Protocol User Interface (minimal) | 3d | 2007-05-02 | 2007-05-04 | 48 | 9.25d |  | etavela [25%]; rsrinavasa; jpike | 54h |
| 50 | 1.1.1.4.8 | **Finalize Deliverables** | 1d? | 2007-04-02 | 2007-04-02 |  | 33.25d |  |  |  |
| 51 | 1.1.1.4.8.1 | Release Architectural Prototype | 1d? | 2007-04-02 | 2007-04-02 |  | 33.25d |  |  |  |

Notes:
- 45: 2 weeks anticipates that code generation will be a part of it

| ID | WBS | Task | Type | Duration | Start | Finish | Predecessors | Total slack | Constraint | Resources | Work |
| --- | --- | --- | --- | --- | --- | --- | --- | --- | --- | --- | --- |
| 52 | 5 | **Test** |  | 3d? | 2007-04-02 | 2007-04-04 |  | 28.25d |  |  | 47.2h |
| 53 | 1.1.1.5.1 | Implement System Tests Against Protocol Management |  | 1d? | 2007-04-02 | 2007-04-02 |  | 33.25d |  | smatyas | 8h |
| 54 | 5.1 | Analyze and Identify Test Approach |  | 0.25d | 2007-04-02 | 2007-04-02 |  | 34d |  | smatyas; etavela; bgendleman; rdaly | 8h |
| 55 | 1.1.1.5.3 | **Finalize Deliverables** |  | 3d | 2007-04-02 | 2007-04-04 |  | 28.25d |  |  | 31.2h |
| 56 | 1.1.1.5.3.1 | Release Test Plan |  | 3d | 2007-04-02 | 2007-04-04 |  | 28.25d |  | smatyas; bgendleman [25%]; etavela [5%] | 31.2h |
| 57 | 6 | **Environment** |  | 5.25d? | 2007-04-02 | 2007-04-09 |  | 29d |  |  | 126h |
| 58 | 1.1.1.6.1 | Launch Development Process |  | 2h | 2007-04-09 | 2007-04-09 |  | 29d | start no earlier than 2007-04-09 | etavela; smatyas; bgendleman; rdaly; jpike; smiller; rsrinavasa | 14h |
| 59 | 1.1.1.6.2 | **Set Up Tools** |  | 4d? | 2007-04-02 | 2007-04-05 |  | 30.25d |  |  | 84h |
| 60 | 1.1.1.6.2.1 | Set Up Maven |  | 2d | 2007-04-02 | 2007-04-03 |  | 32.25d | start no earlier than 2007-04-02 | smatyas [50%]; smiller [50%] | 16h |
| 61 | 1.1.1.6.2.2 | Set Up Continuous Integration |  | 1d? | 2007-04-05 | 2007-04-05 |  | 30.25d | start no earlier than 2007-04-05 | smatyas | 8h |
| 62 | 1.1.1.6.2.3 | Set Up Eclipse |  | 1d? | 2007-04-03 | 2007-04-03 |  | 32.25d | start no earlier than 2007-04-03 | jpike; smiller [50%] | 12h |
| 63 | 1.1.1.6.2.4 | Set Up Selenium |  | 2d | 2007-04-02 | 2007-04-03 |  | 32.25d |  | smatyas | 16h |
| 64 | 1.1.1.6.2.5 | Set Up Code Quality Tools |  | 2d? | 2007-04-02 | 2007-04-03 |  | 32.25d |  | smatyas; smiller | 32h |
| 65 | 1.1.1.6.3 | **Finalize Deliverables** |  | 2d? | 2007-04-02 | 2007-04-03 |  | 29.25d |  |  | 28h |
| 66 | 1.1.1.6.3.1 | Release Development Case |  | 2d | 2007-04-02 | 2007-04-03 |  | 29.25d |  |  |  |
| 67 | 1.1.1.6.3.2 | Release Guidelines for the Project |  | 2d | 2007-04-02 | 2007-04-03 |  | 29.25d |  | etavela | 16h |
| 68 | 1.1.1.6.3.3 | Release Templates for the Project |  | 1d? | 2007-04-02 | 2007-04-02 |  | 30.25d |  | smiller [50%]; etavela | 12h |
| 69 | 7 | **Configuration & Change Management** |  | 5d? | 2007-04-02 | 2007-04-06 |  | 28.25d |  |  | 64h |
| 70 | 7.1 | Plan Project Configuration and Change Control |  | 5d | 2007-04-02 | 2007-04-06 |  | 29.25d |  |  |  |
| 71 | 1.1.1.7.2 | **Finalize Deliverables** |  | 3d? | 2007-04-02 | 2007-04-04 |  | 28.25d |  |  | 64h |
| 72 | 1.1.1.7.2.1 | Set Up Change Management Environment |  | 1d? | 2007-04-02 | 2007-04-02 |  | 30.25d |  | rdaly; bgendleman; smiller | 24h |
| 73 | 1.1.1.7.2.2 | Release Configuration Management Plan |  | 1d? | 2007-04-02 | 2007-04-02 |  | 30.25d |  | etavela; bgendleman | 16h |
| 74 | 1.1.1.7.2.3 | G-Forge Implementation of the Change Control Process |  | 3d | 2007-04-02 | 2007-04-04 |  | 28.25d |  | bgendleman | 24h |
| 75 | 1.1.1.8 | Inception Complete | milestone | 0d | 2007-05-15 | 2007-05-15 | 4, 5, 27, 9, 55, 65, 71 | 0d |  |  |  |

Notes:
- 60: Instructions documented on Wiki
- 62: Instructions documented on Wiki
- 64: Cobertura, PMD, CheckStyle, Simian, JUnit
- 67: UML, Java, JSP/HTML
- 68: Java, JSP/HTML

| ID | WBS | Task | Type | Duration | Start | Finish | Predecessors | Total slack | Constraint | Resources | Work |
| --- | --- | --- | --- | --- | --- | --- | --- | --- | --- | --- | --- |
| 76 | 1.2 | **Elaboration Phase** |  | 1d? | 2007-05-15 | 2007-05-16 | 75 | 0d |  |  | 20h |
| 77 | 1.2.1 | **Elaboration - Iteration 1** |  | 0.5d | 2007-05-15 | 2007-05-15 |  | 0.5d |  |  | 20h |
| 78 | 1.2.1.1 | Iteration Post Mortem |  | 4h | 2007-05-15 | 2007-05-15 | 75 | 0.5d | start no earlier than 2007-05-14 | etavela; bgendleman; smatyas; jpike; rsrinavasa | 20h |
| 79 | 1.2.2 | Elaboration - Iteration 2 |  | 1d? | 2007-05-15 | 2007-05-16 |  | 0d |  |  |  |
| 80 | 1.2.3 | Elaboration - Iteration n |  | 1d? | 2007-05-15 | 2007-05-16 |  | 0d |  |  |  |
| 81 | 1.3 | **Construction Phase** |  | 1d? | 2007-05-16 | 2007-05-17 | 76 | 0d |  |  |  |
| 82 | 1.3.1 | Construction - Iteration 1 |  | 1d? | 2007-05-16 | 2007-05-17 |  | 0d |  |  |  |
| 83 | 1.3.2 | Construction - Iteration 2 | milestone | 1d? | 2007-05-16 | 2007-05-17 |  | 0d |  |  |  |
| 84 | 1.3.3 | Construction - Iteration n | milestone | 1d? | 2007-05-16 | 2007-05-17 |  | 0d |  |  |  |
| 85 | 1.4 | **Transition Phase** |  | 1d? | 2007-05-17 | 2007-05-18 | 81 | 0d |  |  |  |
| 86 | 1.4.1 | Transition - Iteration 1 | milestone | 1d? | 2007-05-17 | 2007-05-18 |  | 0d |  |  |  |
| 87 | 1.4.2 | Transition - Iteration n | milestone | 1d? | 2007-05-17 | 2007-05-18 |  | 0d |  |  |  |
